# FIRST_2994_2013_Fab

Schedule from MS Project, 2013-01-05 to 2013-04-08, 3.5 hours a day.

## Calendars

- Standard: Mon 16:00-18:00, 18:30-20:00; Tue off; Wed-Thu 16:00-18:00, 18:30-20:00; Fri off; Sat 16:00-18:00, 18:30-20:00; Sun off.

## Resources

| Resource | Group |
| --- | --- |
| Plyboy | Robot |
| Swish | Robot |
| Whammo | Robot |
| Jack McCracken | Software/Electrical |
| Gabrielle Genereux | Software/Electrical |
| Will Prado | Software/Electrical |
| Celina Vivian | Software/Electrical |
| Ross Andress | Software/Electrical |
| Laurence Cunnane | Software/Electrical |
| Kyle Bergeron | Software/Electrical |
| Ken James | Mentor |
| Dan Williston | Mentor |
| Shahrukh Alavi | Mentor |
| Nicholas Loomes | Mechanical Design |
| Sean Frank | Mechanical Design |
| Yannick Brisebois | Mechanical Design |
| Paolo Vargas | Mechanical Design |
| Sam McCracken | Mechanical Design |
| Joshua Garbutt-St. Jean | Mechanical Design |
| Marissa Law | Mechanical Design |
| Daniel Garner | Mechanical Design |
| Tyler Cooke | Mechanical Design |
| Bailey Kulla | Mechanical Design |
| Gabriele Leduc | Mechanical Design |
| Matthew Bailey | Mentor |
| Phil Genereux | Mentor |
| Andrew Verheyden | Fabrication and Assembly |
| Brandon Bates | Fabrication and Assembly |
| Bruno Chiaragato | Fabrication and Assembly |
| James Carr | Fabrication and Assembly |
| Liam Pelly | Fabrication and Assembly |
| David Gourevitch | Fabrication and Assembly |
| James Prado | Fabrication and Assembly |
| Robert Myszka | Fabrication and Assembly |
| Blair Hulaj | Fabrication and Assembly |
| Jordan Parisee | Fabrication and Assembly |
| Konnor Wood | Fabrication and Assembly |
| Paul McDonough | Mentor |
| Hugh Carry | Mentor |

## Schedule

| ID | WBS | Task | Type | Duration | Start | Finish | Predecessors | Baseline start | Baseline finish | Baseline duration | Total slack | Free slack | Constraint | Resources | Work |
| --- | --- | --- | --- | --- | --- | --- | --- | --- | --- | --- | --- | --- | --- | --- | --- |
| 1 | 1 | **Build Season Milestones** |  | 26d | 2013-01-05 | 2013-02-19 |  | 2013-01-05 | 2013-02-19 | 26d | 27.86d |  |  |  |  |
| 2 | 1.1 | Kickoff | milestone | 0d | 2013-01-05 | 2013-01-05 |  | 2013-01-05 | 2013-01-05 | 0d | 53.86d |  |  |  |  |
| 3 | 1.2 | Stop-Build Day | milestone | 0d | 2013-02-19 | 2013-02-19 |  | 2013-02-19 | 2013-02-19 | 0d | 27.86d |  | start no earlier than 2013-02-19 |  |  |
| 4 | 2 | **Hardware Milestones** |  | 23.2d? | 2013-01-05 | 2013-02-14 |  | 2013-01-05 | 2013-02-11 | 21.29d? | 30.66d |  |  |  |  |
| 5 | 2.1 | CAD Done |  | 1d? | 2013-01-23 | 2013-01-23 |  | 2013-01-23 | 2013-01-23 | 1d? | 31.36d | 0d | start no earlier than 2013-01-23 |  |  |
| 6 | 2.2 | parts received from protocase | milestone | 0d | 2013-01-30 | 2013-01-30 |  | 2013-01-30 | 2013-01-30 | 0d | 33.36d | 2d | start no earlier than 2013-01-30 |  |  |
| 7 | 2.3 | Plyboy Compressed Air Charging System Done | milestone | 0d | 2013-01-05 | 2013-01-05 |  | 2013-01-05 | 2013-01-05 | 0d | 53.86d |  |  |  |  |
| 8 | 2.4 | Whammo Compressed Air Charging System Done | milestone | 0d | 2013-01-05 | 2013-01-05 |  | 2013-01-05 | 2013-01-05 | 0d | 53.86d |  |  |  |  |
| 9 | 2.5 | Whammo Driving Mechanism Done | milestone | 0d | 2013-02-09 | 2013-02-09 | 37 | 2013-02-02 | 2013-02-02 | 0d | 33.76d |  |  |  |  |
| 10 | 2.6 | Whammo Frisbee Collector Done | milestone | 0d | 2013-02-07 | 2013-02-07 | 44 | 2013-01-07 | 2013-01-07 | 0d | 34.26d |  |  |  |  |
| 11 | 2.7 | Whammo Shooter Done | milestone | 0d | 2013-02-13 | 2013-02-13 | 51 | 2013-01-07 | 2013-01-07 | 0d | 31.76d |  |  |  |  |
| 12 | 2.8 | Whammo Climb Mechanism Done | milestone | 0d | 2013-02-14 | 2013-02-14 | 58 | 2013-01-07 | 2013-01-07 | 0d | 30.66d |  |  |  |  |
| 13 | 2.9 | Whammo Hardware Complete | milestone | 0d | 2013-02-11 | 2013-02-11 |  | 2013-02-11 | 2013-02-11 | 0d | 32.57d |  | finish no earlier than 2013-02-11 |  |  |
| 14 | 3 | **Competition Season** |  | 18.86d | 2013-03-07 | 2013-04-08 |  | 2013-01-05 | 2013-04-08 | 53.86d? | 0d |  |  |  |  |
| 15 | 3.1 | FRC Greater Toronto East Regional |  | 6.86d | 2013-03-07 | 2013-03-18 |  | 2013-03-07 | 2013-03-18 | 6.86d | 12d |  | start no earlier than 2013-03-07 |  |  |
| 16 | 3.2 | FRC Greater Toronto West Regional |  | 6.86d | 2013-03-28 | 2013-04-08 |  | 2013-03-28 | 2013-04-08 | 6.86d | 0d |  | start no earlier than 2013-03-28 |  |  |
| 17 | 4 | start of fabrication | milestone | 0d | 2013-01-07 | 2013-01-07 |  | 2013-01-07 | 2013-01-07 | 0d | 47.86d | 0d | start no earlier than 2013-01-07 |  |  |
| 18 | 5 | First day at practice field | milestone | 0d | 2013-01-26 | 2013-01-26 |  | 2013-01-26 | 2013-01-26 | 0d | 32.86d | 0d | start no earlier than 2013-01-26 |  |  |
| 19 | 6 | **Fabricate Field Parts** |  | 11d | 2013-01-05 | 2013-01-23 |  | 2013-01-26 | 2013-02-09 | 9d | 42.86d |  |  |  |  |
| 20 | 6.1 | Fabricate Pyramid Parts |  | 11d | 2013-01-05 | 2013-01-23 |  | 2013-01-26 | 2013-02-09 | 9d | 42.86d |  |  |  |  |
| 21 | 6.2 | Fabricate Goal Parts |  | 7d | 2013-01-05 | 2013-01-16 |  | 2013-01-26 | 2013-02-06 | 7d | 46.86d |  |  |  |  |
| 22 | 6.3 | Fabricate Wall Parts |  | 2d | 2013-01-05 | 2013-01-07 |  | 2013-01-26 | 2013-01-28 | 2d | 51.86d |  |  |  |  |
| 23 | 7 | **Assemble Field** |  | 1d | 2013-01-26 | 2013-01-26 | 17, 18 | 2013-01-26 | 2013-01-26 | 1d | 29.66d | 0d |  |  | 20.12h |
| 24 | 7.1 | Assemble Pyramid |  | 1d | 2013-01-26 | 2013-01-26 |  | 2013-01-26 | 2013-01-26 | 1d | 40.86d |  |  | Andrew Verheyden [25%]; Tyler Cooke [25%]; Liam Pelly [25%]; Blair Hulaj [25%]; Paul McDonough | 7h |
| 25 | 7.2 | Assemble Goals |  | 1d | 2013-01-26 | 2013-01-26 |  | 2013-01-26 | 2013-01-26 | 1d | 40.86d |  |  | Tyler Cooke [25%]; Andrew Verheyden [25%]; Liam Pelly [25%]; Blair Hulaj [25%]; Paul McDonough [25%] | 4.38h |
| 26 | 7.3 | Assemble Walls |  | 1d | 2013-01-26 | 2013-01-26 |  | 2013-01-26 | 2013-01-26 | 1d | 40.86d |  |  | Tyler Cooke [25%]; Andrew Verheyden [25%]; Liam Pelly [25%]; Blair Hulaj [25%]; Paul McDonough [25%] | 4.38h |
| 27 | 7.4 | Assemble Floor |  | 1d | 2013-01-26 | 2013-01-26 |  | 2013-01-26 | 2013-01-26 | 1d | 40.86d |  |  | Tyler Cooke [25%]; Andrew Verheyden [25%]; Liam Pelly [25%]; Blair Hulaj [25%]; Paul McDonough [25%] | 4.38h |

| ID | WBS | Task | Duration | Start | Finish | Predecessors | Baseline start | Baseline finish | Baseline duration | Total slack | Free slack | Constraint | Resources | Work |
| --- | --- | --- | --- | --- | --- | --- | --- | --- | --- | --- | --- | --- | --- | --- |
| 28 | 8 | **Assemble Gearbox** | 1d | 2013-01-16 | 2013-01-16 | 17 | 2013-01-16 | 2013-01-16 | 1d | 46.86d |  |  |  | 10.5h |
| 29 | 8.1 | WhammoA Gearbox | 1d | 2013-01-16 | 2013-01-16 |  | 2013-01-16 | 2013-01-16 | 1d | 46.86d |  | start no earlier than 2013-01-16 | Andrew Verheyden [50%]; Liam Pelly [50%]; Blair Hulaj [50%] | 5.25h |
| 30 | 8.2 | WhammoB Gearbox | 1d | 2013-01-16 | 2013-01-16 |  | 2013-01-16 | 2013-01-16 | 1d | 46.86d |  | start no earlier than 2013-01-16 | Andrew Verheyden [50%]; Liam Pelly [50%]; Blair Hulaj [50%] | 5.25h |
| 31 | 9 | **Fabricate Robot Parts** | 5d | 2013-01-28 | 2013-02-04 | 17, 5, 23 | 2013-01-24 | 2013-01-31 | 5d | 29.66d | 0d |  |  | 52.5h |
| 32 | 9.1 | WhammoA Robot Parts | 5d | 2013-01-28 | 2013-02-04 |  | 2013-01-24 | 2013-01-31 | 5d | 29.66d |  |  | Andrew Verheyden [50%]; Liam Pelly [50%]; Blair Hulaj [50%] | 26.25h |
| 33 | 9.2 | WhammoB Robot Parts | 5d | 2013-01-28 | 2013-02-04 |  | 2013-01-24 | 2013-01-31 | 5d | 29.66d |  |  | Andrew Verheyden [50%]; Liam Pelly [50%]; Blair Hulaj [50%] | 26.25h |
| 34 | 10 | **Assemble Drive Frame** | 3.1d | 2013-02-06 | 2013-02-11 | 17, 6, 31 | 2013-01-30 | 2013-02-02 | 3d? | 29.66d | 0d |  |  | 58.8h |
| 35 | 10.1 | WhammoA Assemble Drive Frame | 1d | 2013-02-06 | 2013-02-06 |  | 2013-01-30 | 2013-01-30 | 1d? | 29.66d | 0d |  | Andrew Verheyden; Liam Pelly; Paul McDonough; Nicholas Loomes; James Prado | 17.5h |
| 36 | 10.2 | WhammoA Wiring for Drive System | 1d | 2013-02-07 | 2013-02-07 | 35 | 2013-01-31 | 2013-01-31 | 1d? | 29.66d | 0d |  | Hugh Carry; Robert Myszka; James Carr | 10.5h |
| 37 | 10.3 | WhammoA Mechanical Testing for Drive Frame | 0.1d | 2013-02-09 | 2013-02-09 | 36 | 2013-02-02 | 2013-02-02 | 1d? | 30.56d | 0d |  | Andrew Verheyden; Nicholas Loomes; Matthew Bailey; Paul McDonough | 1.4h |
| 38 | 10.4 | WhammoB Assemble Drive Frame | 1d | 2013-02-06 | 2013-02-06 |  | 2013-01-30 | 2013-01-30 | 1d? | 30.66d | 1d |  | Tyler Cooke; Brandon Bates; Bruno Chiaragato; Blair Hulaj; Robert Myszka | 17.5h |
| 39 | 10.5 | WhammoB Wiring for Drive System | 1d | 2013-02-09 | 2013-02-09 | 38, 36 | 2013-01-31 | 2013-01-31 | 1d? | 29.66d | 0d |  | Andrew Verheyden; Robert Myszka; James Carr | 10.5h |
| 40 | 10.6 | WhammoB Mechanical Testing for Drive Frame | 0.1d | 2013-02-11 | 2013-02-11 | 39, 37 | 2013-02-02 | 2013-02-02 | 1d? | 29.66d |  |  | Andrew Verheyden; Nicholas Loomes; Matthew Bailey; Paul McDonough | 1.4h |
| 41 | 11 | **Assemble Frisbee Collector** | 2.1d | 2013-02-06 | 2013-02-09 | 17, 6, 31 | 2013-01-07 | 2013-01-07 | 1d? | 31.76d | 0d |  |  | 20.65h |
| 42 | 11.1 | WhammoA Assemble Frisbee Collector | 1d | 2013-02-06 | 2013-02-06 |  | 2013-01-07 | 2013-01-07 | 1d? | 32.26d | 0d |  | Blair Hulaj; Robert Myszka | 7h |
| 43 | 11.2 | WhammoA Wiring for Frisbee Collector | 0.5d | 2013-02-07 | 2013-02-07 | 42 | 2013-01-07 | 2013-01-07 | 1d? | 32.26d | 0d |  | Blair Hulaj | 1.75h |
| 44 | 11.3 | WhammoA Mechanical Testing for Frisbee Collector | 0.1d | 2013-02-07 | 2013-02-07 | 43 | 2013-01-07 | 2013-01-07 | 1d? | 32.26d | 0d |  | Matthew Bailey; Robert Myszka | 0.7h |
| 45 | 11.4 | WhammoB Assemble Frisbee Collector | 1d | 2013-02-06 | 2013-02-06 |  | 2013-01-07 | 2013-01-07 | 1d? | 31.76d | 0d |  | Bruno Chiaragato; Liam Pelly | 7h |
| 46 | 11.5 | WhammoB Wiring for Frisbee Collector | 1d | 2013-02-07 | 2013-02-07 | 45 | 2013-01-07 | 2013-01-07 | 1d? | 31.76d | 0d |  | Bruno Chiaragato | 3.5h |
| 47 | 11.6 | WhammoB Mechanical Testing for Frisbee Collector | 0.1d | 2013-02-09 | 2013-02-09 | 46 | 2013-01-07 | 2013-01-07 | 1d? | 31.76d |  |  | Matthew Bailey; Liam Pelly | 0.7h |
| 48 | 12 | **Assemble Shooter** | 2d | 2013-02-09 | 2013-02-13 | 17, 6, 41, 31 | 2013-01-07 | 2013-01-07 | 1d? | 31.76d |  |  |  | 45.5h |
| 49 | 12.1 | WhammoA Assemble Shooter | 1.25d | 2013-02-09 | 2013-02-11 |  | 2013-01-07 | 2013-01-07 | 1d? | 31.76d | 0d |  | Brandon Bates; Bruno Chiaragato; Andrew Verheyden; Liam Pelly | 17.5h |
| 50 | 12.2 | WhammoA Wiring for Shooter | 0.25d | 2013-02-11 | 2013-02-11 | 49 | 2013-01-07 | 2013-01-07 | 1d? | 31.76d | 0d |  | Bruno Chiaragato; Andrew Verheyden | 1.75h |
| 51 | 12.3 | WhammoA Mechanical Testing for Shooter | 0.5d | 2013-02-11 | 2013-02-13 | 50 | 2013-01-07 | 2013-01-07 | 1d? | 31.76d | 0d |  | Andrew Verheyden; Matthew Bailey | 3.5h |
| 52 | 12.4 | WhammoB Assemble Shooter | 1.25d | 2013-02-09 | 2013-02-11 |  | 2013-01-07 | 2013-01-07 | 1d? | 31.76d | 0d |  | Brandon Bates; Bruno Chiaragato; Andrew Verheyden; Liam Pelly | 17.5h |
| 53 | 12.5 | WhammoB Wiring for Shooter | 0.25d | 2013-02-11 | 2013-02-11 | 52 | 2013-01-07 | 2013-01-07 | 1d? | 31.76d | 0d |  | Bruno Chiaragato; Andrew Verheyden | 1.75h |
| 54 | 12.6 | WhammoB Mechanical Testing for Shooter | 0.5d | 2013-02-11 | 2013-02-13 | 53 | 2013-01-07 | 2013-01-07 | 1d? | 31.76d |  |  | Andrew Verheyden; Matthew Bailey | 3.5h |

| ID | WBS | Task | Type | Duration | Start | Finish | Predecessors | Baseline start | Baseline finish | Baseline duration | Total slack | Free slack | Resources | Work |
| --- | --- | --- | --- | --- | --- | --- | --- | --- | --- | --- | --- | --- | --- | --- |
| 55 | 13 | **Assemble Climber** |  | 2.1d | 2013-02-11 | 2013-02-14 | 17, 6, 31, 34 | 2013-01-07 | 2013-01-07 | 1d? | 30.66d |  |  | 62.65h |
| 56 | 13.1 | WhammoA Assemble Climber |  | 1.5d | 2013-02-11 | 2013-02-13 |  | 2013-01-07 | 2013-01-07 | 1d? | 30.66d | 0d | Blair Hulaj; Liam Pelly; Bruno Chiaragato; Brandon Bates; Andrew Verheyden | 26.25h |
| 57 | 13.2 | WhammoA Wiring for Climber |  | 0.1d | 2013-02-13 | 2013-02-13 | 56 | 2013-01-07 | 2013-01-07 | 1d? | 30.66d | 0d | Liam Pelly; Andrew Verheyden | 0.7h |
| 58 | 13.3 | WhammoA Mechanical Testing for Climber |  | 0.5d | 2013-02-13 | 2013-02-14 | 57 | 2013-01-07 | 2013-01-07 | 1d? | 30.66d | 0d | Blair Hulaj; Matthew Bailey; Andrew Verheyden | 5.25h |
| 59 | 13.4 | WhammoB Assemble Climber |  | 1.5d | 2013-02-11 | 2013-02-13 |  | 2013-01-07 | 2013-01-07 | 1d? | 30.66d | 0d | Blair Hulaj; Liam Pelly; Bruno Chiaragato; Brandon Bates; Andrew Verheyden | 26.25h |
| 60 | 13.5 | WhammoB Wiring for Climber |  | 0.1d | 2013-02-13 | 2013-02-13 | 59 | 2013-01-07 | 2013-01-07 | 1d? | 30.66d | 0d | Liam Pelly; Andrew Verheyden | 0.7h |
| 61 | 13.6 | WhammoB Mechanical Testing for Climber |  | 0.5d | 2013-02-13 | 2013-02-14 | 60 | 2013-01-07 | 2013-01-07 | 1d? | 30.66d |  | Matthew Bailey; Andrew Verheyden | 3.5h |
| 62 | 14 | **Prototypes** |  | 5d | 2013-01-07 | 2013-01-14 | 17 | 2013-01-07 | 2013-01-07 | 1d? | 47.86d |  |  |  |
| 63 | 14.1 | Drive Frame | milestone | 0d | 2013-01-07 | 2013-01-07 |  | 2013-01-07 | 2013-01-07 | 1d? | 47.86d | 0d |  |  |
| 64 | 14.2 | Frisbee Collector |  | 1d | 2013-01-07 | 2013-01-07 | 63 | 2013-01-07 | 2013-01-07 | 1d? | 47.86d | 0d |  |  |
| 65 | 14.3 | Shooter |  | 1d | 2013-01-09 | 2013-01-09 | 64 | 2013-01-07 | 2013-01-07 | 1d? | 47.86d | 0d |  |  |
| 66 | 14.4 | Climber |  | 3d | 2013-01-10 | 2013-01-14 | 65 | 2013-01-07 | 2013-01-07 | 1d? | 47.86d |  |  |  |
