# FIRST_2994_2013_SW

Schedule from MS Project, 2013-01-05 to 2013-04-08, 3.5 hours a day.

## Calendars

- Standard: Mon 16:00-18:00, 18:30-20:00; Tue off; Wed-Thu 16:00-18:00, 18:30-20:00; Fri off; Sat 16:00-18:00, 18:30-20:00; Sun off.

## Resources

| Resource | Group |
| --- | --- |
| Plyboy | Robot |
| Swish | Robot |
| Whammo | Robot |
| Jack McCracken | Software/Electrical |
| Gabrielle Genereux | Software/Electrical |
| Will Prado | Software/Electrical |
| Celina Vivian | Software/Electrical |
| Ross Andress | Software/Electrical |
| Laurence Cunnane | Software/Electrical |
| Kyle Bergeron | Software/Electrical |
| Ken James | Mentor |
| Dan Williston | Mentor |
| Shahrukh Alavi | Mentor |
| Nicholas Loomes | Mechanical Design |
| Sean Frank | Mechanical Design |
| Yannick Brisebois | Mechanical Design |
| Paolo Vargas | Mechanical Design |
| Sam McCracken | Mechanical Design |
| Joshua Garbutt-St. Jean | Mechanical Design |
| Marissa Law | Mechanical Design |
| Daniel Garner | Mechanical Design |
| Tyler Cooke | Mechanical Design |
| Bailey Kulla | Mechanical Design |
| Gabriele Leduc | Mechanical Design |
| Matthew Bailey | Mentor |
| Phil Genereux | Mentor |
| Andrew Verheyden | Fabrication and Assembly |
| Brandon Bates | Fabrication and Assembly |
| Bruno Chiaragato | Fabrication and Assembly |
| James Carr | Fabrication and Assembly |
| Liam Pelly | Fabrication and Assembly |
| David Gourevitch | Fabrication and Assembly |
| James Prado | Fabrication and Assembly |
| Robert Myszka | Fabrication and Assembly |
| Blair Hulaj | Fabrication and Assembly |
| Jordan Parisee | Fabrication and Assembly |
| Konnor Wood | Fabrication and Assembly |
| Paul McDonough | Mentor |
| Hugh Carry | Mentor |

## Schedule

| ID | WBS | Task | Type | Duration | Start | Finish | Predecessors | Baseline start | Baseline finish | Baseline duration | Total slack | Free slack | Constraint | Resources | Work |
| --- | --- | --- | --- | --- | --- | --- | --- | --- | --- | --- | --- | --- | --- | --- | --- |
| 1 | 1 | **Software Infrastructure** |  | 44d | 2013-01-05 | 2013-03-21 |  | 2013-01-05 | 2013-03-21 | 44d | 9.86d |  |  |  | 96.95h |
| 2 | 1.1 | Install Labview/Development Environment |  | 6d | 2013-01-05 | 2013-01-14 |  | 2013-01-05 | 2013-01-14 | 6d | 9.86d | 0d |  | Celina Vivian [10%]; Gabrielle Genereux [10%]; Jack McCracken [10%]; Kyle Bergeron [10%]; Laurence Cunnane [10%]; Ross Andress [10%]; Will Prado [10%] | 14.7h |
| 3 | 1.2 | Github Repository Setup |  | 2d | 2013-01-05 | 2013-01-07 |  | 2013-01-05 | 2013-01-07 | 2d | 38.86d | 4d | start no earlier than 2013-01-05 | Jack McCracken [90%]; Dan Williston | 13.3h |
| 4 | 1.3 | GitHub Training |  | 1d | 2013-01-16 | 2013-01-16 | 2, 3 | 2013-01-16 | 2013-01-16 | 1d | 34.86d | 0d |  | Celina Vivian; Gabrielle Genereux; Jack McCracken [90%]; Kyle Bergeron; Laurence Cunnane; Ross Andress; Will Prado | 24.15h |
| 5 | 1.4 | Handle Github Pull Requests |  | 38d | 2013-01-16 | 2013-03-21 | 2 | 2013-01-16 | 2013-03-21 | 38d | 9.86d |  |  | Jack McCracken [10%] | 13.3h |
| 6 | 1.5 | Robot Simulator Research |  | 1d | 2013-01-17 | 2013-01-17 | 2, 4 | 2013-01-17 | 2013-01-17 | 1d | 36.86d | 0d |  | Celina Vivian | 3.5h |
| 7 | 1.6 | FIRST Touch I/O Module |  | 1d | 2013-01-17 | 2013-01-17 | 2, 4 | 2013-01-17 | 2013-01-17 | 1d | 45.86d |  |  | Will Prado | 3.5h |
| 8 | 1.7 | Labview Programming |  | 3d | 2013-01-19 | 2013-01-23 | 2, 6, 4 | 2013-01-19 | 2013-01-19 | 1d | 35.86d | 0d |  | Celina Vivian; Gabrielle Genereux | 21h |
| 9 | 1.8 | Robot Builder |  | 1d | 2013-01-17 | 2013-01-17 | 2, 4 | 2013-01-17 | 2013-01-17 | 1d | 45.86d |  |  | Ross Andress | 3.5h |
| 10 | 2 | Software Development Start | milestone | 0d | 2013-01-16 | 2013-01-16 | 2, 3, 4 | 2013-01-16 | 2013-01-16 | 0d | 34.86d | 0d |  |  |  |
| 11 | 3 | Software for Compressed Air Charging |  | 1d | 2013-01-17 | 2013-01-17 | 10 | 2013-01-17 | 2013-01-17 | 1d | 44.86d | 0d |  | Kyle Bergeron | 3.5h |
| 12 | 4 | **Software for Autonomous** |  | 12d? | 2013-01-05 | 2013-01-24 |  | 2013-01-17 | 2013-01-24 | 5d? | 40.86d |  |  |  | 26.6h |
| 13 | 4.1 | Document Autonomous Behaviour |  | 1d? | 2013-01-05 | 2013-01-05 |  |  |  |  | 52.86d |  |  |  |  |
| 14 | 4.2 | Dead Reckoning |  | 3d | 2013-01-19 | 2013-01-23 | 10, 21 | 2013-01-19 | 2013-01-23 | 3d | 32.86d | 0d |  | Will Prado; Jack McCracken [90%] | 19.95h |
| 15 | 4.3 | Collecting Frisbees from Floor |  | 1d? | 2013-01-17 | 2013-01-17 | 10 | 2013-01-17 | 2013-01-17 | 1d? | 42.86d | 0d |  |  |  |
| 16 | 4.4 | Shooter (Fixed Speed) |  | 1d | 2013-01-24 | 2013-01-24 | 10, 14 | 2013-01-24 | 2013-01-24 | 1d | 32.86d | 0d |  | Will Prado; Jack McCracken [90%] | 6.65h |
| 17 | 4.5 | Autonomous Coding Complete | milestone | 0d | 2013-01-24 | 2013-01-24 | 14, 15, 16 | 2013-01-24 | 2013-01-24 | 0d | 41.86d | 4.29d |  |  |  |
| 18 | 5 | **Software for Teleop** |  | 11d | 2013-01-16 | 2013-02-04 |  | 2013-01-16 | 2013-01-31 | 9d? | 32.86d |  |  |  | 92.75h |
| 19 | 5.1 | **R/C Driving** |  | 9.29d | 2013-01-17 | 2013-02-02 | 10 | 2013-01-17 | 2013-01-23 | 4d? | 32.86d | 0d |  |  | 24.15h |
| 20 | 5.1.1 | Document R/C Driving |  | 2d | 2013-01-19 | 2013-01-21 | 21 | 2013-01-19 | 2013-01-21 | 2d | 39.86d | 3.29d |  | Kyle Bergeron | 7h |
| 21 | 5.1.2 | Arcade Drive |  | 1d | 2013-01-17 | 2013-01-17 |  | 2013-01-17 | 2013-01-17 | 1d | 32.86d | 0d |  | Jack McCracken [90%] | 3.15h |
| 22 | 5.1.3 | Pneumatics Ready on Plyboy | milestone | 0d | 2013-01-28 | 2013-01-28 | 21 |  |  |  | 34.57d | 0d | finish no earlier than 2013-01-28 |  |  |
| 23 | 5.1.4 | Manual Supershifters |  | 1d | 2013-01-28 | 2013-01-30 | 20, 22 | 2013-01-23 | 2013-01-23 | 1d | 36.57d | 0d |  | Kyle Bergeron | 3.5h |
| 24 | 5.1.5 | Commit Manual R/C Driving to GitHub | milestone | 0d | 2013-01-30 | 2013-01-30 | 23 | 2013-01-23 | 2013-01-23 | 0d | 36.57d |  |  | Kyle Bergeron |  |
| 25 | 5.1.6 | Automatic Supershifters |  | 2d | 2013-01-28 | 2013-01-31 | 22 | 2013-01-17 | 2013-01-17 | 1d? | 34.57d | 0d |  | Celina Vivian | 7h |
| 26 | 5.1.7 | Commit Automatic Supershifters |  | 1d | 2013-01-31 | 2013-02-02 | 25 | 2013-01-17 | 2013-01-17 | 1d? | 34.57d |  |  | Celina Vivian | 3.5h |
| 27 | 5.2 | R/C Frisbees from Feeder Stations | milestone | 0d | 2013-01-16 | 2013-01-16 | 10 | 2013-01-16 | 2013-01-16 | 0d | 43.86d | 0d |  |  |  |

| ID | WBS | Task | Type | Duration | Start | Finish | Predecessors | Baseline start | Baseline finish | Baseline duration | Total slack | Free slack | Constraint | Resources | Work |
| --- | --- | --- | --- | --- | --- | --- | --- | --- | --- | --- | --- | --- | --- | --- | --- |
| 28 | 5.3 | **R/C Frisbees from Floor** |  | 3d | 2013-01-24 | 2013-01-28 | 10 | 2013-01-21 | 2013-01-24 | 3d | 35.86d | 0d |  |  | 10.5h |
| 29 | 5.3.1 | Document R/C Frisbees from Floor |  | 1d | 2013-01-24 | 2013-01-24 | 8 | 2013-01-21 | 2013-01-21 | 1d | 35.86d | 0d |  | Gabrielle Genereux | 3.5h |
| 30 | 5.3.2 | Code R/C Frisbees from Floor |  | 2d | 2013-01-26 | 2013-01-28 | 29 | 2013-01-23 | 2013-01-24 | 2d | 35.86d | 0d |  | Gabrielle Genereux | 7h |
| 31 | 5.3.3 | Commit R/C Frisbees from Floor to GitHub | milestone | 0d | 2013-01-28 | 2013-01-28 | 30 | 2013-01-24 | 2013-01-24 | 0d | 35.86d | 0d |  | Gabrielle Genereux |  |
| 32 | 5.4 | **R/C Shooting** |  | 6d | 2013-01-26 | 2013-02-04 | 10, 16 | 2013-01-26 | 2013-01-31 | 4d? | 32.86d | 0d |  |  | 23.1h |
| 33 | 5.4.1 | Document R/C Shooting |  | 1d | 2013-01-26 | 2013-01-26 |  | 2013-01-26 | 2013-01-26 | 1d? | 32.86d | 0d |  | Will Prado | 3.5h |
| 34 | 5.4.2 | Code Shooter Motor Control |  | 1d | 2013-01-28 | 2013-01-28 | 33 | 2013-01-28 | 2013-01-28 | 1d? | 32.86d | 0d |  | Will Prado | 3.5h |
| 35 | 5.4.3 | Prototype PID Speed Control on Plyboy |  | 4d | 2013-01-30 | 2013-02-04 | 34 | 2013-01-30 | 2013-01-30 | 1d? | 32.86d | 0d |  | Jack McCracken [90%] | 12.6h |
| 36 | 5.4.4 | Push Shooter Motor Control Code to GitHub | milestone | 0d | 2013-02-04 | 2013-02-04 | 35 | 2013-01-31 | 2013-01-31 | 1d? | 32.86d |  |  | Will Prado |  |
| 37 | 5.4.5 | Code Index Motor |  | 1d | 2013-01-30 | 2013-01-30 | 31 | 2013-01-26 | 2013-01-26 | 1d? | 35.86d | 0d |  | Will Prado | 3.5h |
| 38 | 5.4.6 | Push Index Motor Control Code to GitHub | milestone | 0d | 2013-01-30 | 2013-01-30 | 37 | 2013-01-28 | 2013-01-28 | 1d? | 35.86d |  |  | Will Prado |  |
| 39 | 5.5 | **Climbing** |  | 5d | 2013-01-28 | 2013-02-04 | 10 | 2013-01-17 | 2013-01-17 | 1d? | 34.86d | 0d |  |  | 28h |
| 40 | 5.5.1 | Document Climbing |  | 1d | 2013-01-28 | 2013-01-28 |  |  |  |  | 34.86d | 0d | start no earlier than 2013-01-28 | Ross Andress; Laurence Cunnane | 7h |
| 41 | 5.5.2 | Code Climber Arm |  | 2d | 2013-01-30 | 2013-01-31 | 40 |  |  |  | 36.86d | 0d |  | Ross Andress | 7h |
| 42 | 5.5.3 | Code Claw |  | 2d | 2013-01-30 | 2013-01-31 | 40 |  |  |  | 34.86d | 0d |  | Laurence Cunnane | 7h |
| 43 | 5.5.4 | Code Claw Sensor |  | 2d | 2013-02-02 | 2013-02-04 | 40, 42 |  |  |  | 34.86d | 0d |  | Laurence Cunnane | 7h |
| 44 | 5.5.5 | Push Climbing Code to GitHub | milestone | 0d | 2013-02-04 | 2013-02-04 | 41, 42, 43 |  |  |  | 34.86d |  |  | Ross Andress; Laurence Cunnane |  |
| 45 | 5.6 | Camera View |  | 2d | 2013-01-24 | 2013-01-26 | 10, 8 | 2013-01-21 | 2013-01-23 | 2d | 40.86d | 3.29d |  | Celina Vivian | 7h |
| 46 | 5.7 | Teleop Coding Complete | milestone | 0d | 2013-02-04 | 2013-02-04 | 19, 27, 28, 32, 39, 45 | 2013-01-31 | 2013-01-31 | 0d | 35.86d | 0d |  |  |  |
| 47 | 6 | Coding Complete | milestone | 0d | 2013-02-04 | 2013-02-04 | 17, 46 | 2013-01-31 | 2013-01-31 | 0d | 35.86d |  |  |  |  |
| 48 | 7 | **Build Season Milestones** |  | 26d | 2013-01-05 | 2013-02-19 |  | 2013-01-05 | 2013-02-19 | 26d | 27.86d |  |  |  |  |
| 49 | 7.1 | Kickoff | milestone | 0d | 2013-01-05 | 2013-01-05 |  | 2013-01-05 | 2013-01-05 | 0d | 53.86d |  |  |  |  |
| 50 | 7.2 | Stop-Build Day | milestone | 0d | 2013-02-19 | 2013-02-19 |  | 2013-02-19 | 2013-02-19 | 0d | 27.86d |  | start no earlier than 2013-02-19 |  |  |
| 51 | 8 | **Hardware Milestones** |  | 21.29d | 2013-01-05 | 2013-02-11 |  | 2013-01-05 | 2013-02-11 | 21.29d | 31.57d |  |  |  |  |
| 52 | 8.1 | Plyboy Compressed Air Charging System Done | milestone | 0d | 2013-01-05 | 2013-01-05 |  | 2013-01-05 | 2013-01-05 | 0d | 52.86d | 8d |  |  |  |
| 53 | 8.2 | Whammo Compressed Air Charging System Done | milestone | 0d | 2013-01-05 | 2013-01-05 |  | 2013-01-05 | 2013-01-05 | 0d | 52.86d | 8d |  |  |  |
| 54 | 8.3 | Whammo Driving Mechanism Done | milestone | 0d | 2013-01-05 | 2013-01-05 |  | 2013-01-05 | 2013-01-05 | 0d | 50.86d | 11d |  |  |  |
| 55 | 8.4 | Whammo Frisbee Collector Done | milestone | 0d | 2013-01-05 | 2013-01-05 |  | 2013-01-05 | 2013-01-05 | 0d | 50.86d | 7d |  |  |  |
| 56 | 8.5 | Whammo Shooter Done | milestone | 0d | 2013-01-05 | 2013-01-05 |  | 2013-01-05 | 2013-01-05 | 0d | 50.86d | 12d |  |  |  |
| 57 | 8.6 | Whammo Climb Mechanism Done | milestone | 0d | 2013-01-05 | 2013-01-05 |  | 2013-01-05 | 2013-01-05 | 0d | 52.86d | 8d |  |  |  |
| 58 | 8.7 | Whammo Hardware Complete | milestone | 0d | 2013-02-11 | 2013-02-11 |  | 2013-02-11 | 2013-02-11 | 0d | 30.57d | 0d | finish no earlier than 2013-02-11 |  |  |

| ID | WBS | Task | Type | Duration | Start | Finish | Predecessors | Baseline start | Baseline finish | Baseline duration | Total slack | Free slack | Constraint | Resources | Work |
| --- | --- | --- | --- | --- | --- | --- | --- | --- | --- | --- | --- | --- | --- | --- | --- |
| 59 | 9 | **Software Unit Testing** |  | 12d? | 2013-01-17 | 2013-02-06 |  | 2013-01-17 | 2013-02-02 | 10d? | 34.86d |  |  |  | 38.5h |
| 60 | 9.1 | Unit Test Compressed Air Charging on Plyboy |  | 1d? | 2013-01-19 | 2013-01-19 | 52, 11 | 2013-01-19 | 2013-01-19 | 1d? | 44.86d |  |  | Plyboy | 3.5h |
| 61 | 9.2 | Unit Test Compressed Air Charging on Whammo |  | 1d? | 2013-01-19 | 2013-01-19 | 53, 11 | 2013-01-19 | 2013-01-19 | 1d? | 44.86d |  |  | Whammo | 3.5h |
| 62 | 9.3 | Unit Test Autonomous Dead Reckoning on Swish |  | 1d? | 2013-01-24 | 2013-01-24 | 14 | 2013-01-24 | 2013-01-24 | 1d? | 39.86d | 1d |  | Swish | 3.5h |
| 63 | 9.4 | Unit Test Autonomous Dead Reckoning on Whammo |  | 1d? | 2013-01-24 | 2013-01-24 | 14, 54 | 2013-01-24 | 2013-01-24 | 1d? | 39.86d | 1d |  | Whammo | 3.5h |
| 64 | 9.5 | Unit Test Autonomous Frisbee Collection from Floor |  | 1d? | 2013-01-19 | 2013-01-19 | 15, 55 | 2013-01-19 | 2013-01-19 | 1d? | 42.86d | 4d |  | Whammo | 3.5h |
| 65 | 9.6 | Unit Test Autonomous Shooter |  | 1d? | 2013-01-26 | 2013-01-26 | 16, 56 | 2013-01-26 | 2013-01-26 | 1d? | 38.86d | 0d |  | Whammo | 3.5h |
| 66 | 9.7 | Unit Test R/C Driving |  | 1d? | 2013-02-02 | 2013-02-04 | 19, 54 | 2013-01-24 | 2013-01-24 | 1d? | 34.57d | 0d |  | Whammo | 3.5h |
| 67 | 9.8 | Unit Test R/C Frisbees from Feeder Station |  | 1d? | 2013-01-17 | 2013-01-17 | 27, 55 | 2013-01-17 | 2013-01-17 | 1d? | 43.86d | 9.29d |  | Whammo | 3.5h |
| 68 | 9.9 | Unit Test R/C Frisbees from Floor |  | 1d? | 2013-01-30 | 2013-01-30 | 28, 55 | 2013-01-26 | 2013-01-26 | 1d? | 36.86d | 2.29d |  | Whammo | 3.5h |
| 69 | 9.10 | Unit test R/C Shooting |  | 1d? | 2013-02-06 | 2013-02-06 | 32, 56 | 2013-02-02 | 2013-02-02 | 1d? | 32.86d | 0d |  | Whammo | 3.5h |
| 70 | 9.11 | Unit Test Climbing |  | 1d? | 2013-02-06 | 2013-02-06 | 39, 57 | 2013-01-19 | 2013-01-19 | 1d? | 34.86d |  |  | Whammo | 3.5h |
| 71 | 9.12 | Unit Test Autonomous Software Done | milestone | 0d | 2013-01-26 | 2013-01-26 | 62, 63, 64, 65 | 2013-01-26 | 2013-01-26 | 0d | 38.86d | 8.29d |  |  |  |
| 72 | 9.13 | Unit Test Teleop Software Done | milestone | 0d | 2013-02-06 | 2013-02-06 | 66, 67, 68, 69 | 2013-02-02 | 2013-02-02 | 0d | 32.86d | 2.29d |  |  |  |
| 73 | 10 | **Integration Testing** |  | 2d | 2013-02-11 | 2013-02-14 |  | 2013-02-11 | 2013-02-14 | 2d | 30.57d |  |  |  |  |
| 74 | 10.1 | Integration Test Autonomous |  | 2d | 2013-02-11 | 2013-02-14 | 71, 58 | 2013-02-11 | 2013-02-14 | 2d | 30.57d |  |  |  |  |
| 75 | 10.2 | Integration Test Teleop |  | 2d | 2013-02-11 | 2013-02-14 | 72, 58 | 2013-02-11 | 2013-02-14 | 2d | 30.57d |  |  |  |  |
| 76 | 11 | **Competition Season** |  | 18.86d | 2013-03-07 | 2013-04-08 |  | 2013-03-07 | 2013-04-08 | 18.86d | 0d |  |  |  |  |
| 77 | 11.1 | FRC Greater Toronto East Regional |  | 6.86d | 2013-03-07 | 2013-03-18 |  | 2013-03-07 | 2013-03-18 | 6.86d | 12d |  | start no earlier than 2013-03-07 |  |  |
| 78 | 11.2 | FRC Greater Toronto West Regional |  | 6.86d | 2013-03-28 | 2013-04-08 |  | 2013-03-28 | 2013-04-08 | 6.86d | 0d |  | start no earlier than 2013-03-28 |  |  |
| 79 | 12 | **Time off** |  | 41d | 2013-01-24 | 2013-04-04 |  | 2013-01-24 | 2013-04-04 | 41d | 1.86d |  |  |  |  |
| 80 | 12.1 | Dan unavailable 1 |  | 1d | 2013-02-09 | 2013-02-09 |  | 2013-02-09 | 2013-02-09 | 1d | 32.86d |  | start no earlier than 2013-02-08 |  |  |
| 81 | 12.2 | **Kyle Unavailable** |  | 41d | 2013-01-24 | 2013-04-04 |  | 2013-01-24 | 2013-04-04 | 41d | 1.86d |  |  |  |  |
| 82 | 12.2.1 | Kyle Unavailable 1 |  | 1d | 2013-01-24 | 2013-01-24 |  | 2013-01-24 | 2013-01-24 | 1d | 41.86d |  | start no earlier than 2013-01-24 |  |  |
| 83 | 12.2.2 | Kyle Unavailable 2 |  | 1d | 2013-01-31 | 2013-01-31 |  | 2013-01-31 | 2013-01-31 | 1d | 37.86d |  | start no earlier than 2013-01-31 |  |  |
| 84 | 12.2.3 | Kyle Unavailable 3 |  | 1d | 2013-02-07 | 2013-02-07 |  | 2013-02-07 | 2013-02-07 | 1d | 33.86d |  | start no earlier than 2013-02-07 |  |  |
| 85 | 12.2.4 | Kyle Unavailable 4 |  | 1d | 2013-02-14 | 2013-02-14 |  | 2013-02-14 | 2013-02-14 | 1d | 29.86d |  | start no earlier than 2013-02-14 |  |  |
| 86 | 12.2.5 | Kyle Unavailable 5 |  | 1d | 2013-02-21 | 2013-02-21 |  | 2013-02-21 | 2013-02-21 | 1d | 25.86d |  | start no earlier than 2013-02-21 |  |  |
| 87 | 12.2.6 | Kyle Unavailable 6 |  | 1d | 2013-02-28 | 2013-02-28 |  | 2013-02-28 | 2013-02-28 | 1d | 21.86d |  | start no earlier than 2013-02-28 |  |  |
| 88 | 12.2.7 | Kyle Unavailable 7 |  | 1d | 2013-03-07 | 2013-03-07 |  | 2013-03-07 | 2013-03-07 | 1d | 17.86d |  | start no earlier than 2013-03-07 |  |  |
| 89 | 12.2.8 | Kyle Unavailable 8 |  | 1d | 2013-03-14 | 2013-03-14 |  | 2013-03-14 | 2013-03-14 | 1d | 13.86d |  | start no earlier than 2013-03-14 |  |  |
| 90 | 12.2.9 | Kyle Unavailable 9 |  | 1d | 2013-03-21 | 2013-03-21 |  | 2013-03-21 | 2013-03-21 | 1d | 9.86d |  | start no earlier than 2013-03-21 |  |  |
| 91 | 12.2.10 | Kyle Unavailable 10 |  | 1d | 2013-03-28 | 2013-03-28 |  | 2013-03-28 | 2013-03-28 | 1d | 5.86d |  | start no earlier than 2013-03-28 |  |  |
| 92 | 12.2.11 | Kyle Unavailable 11 |  | 1d | 2013-04-04 | 2013-04-04 |  | 2013-04-04 | 2013-04-04 | 1d | 1.86d |  | start no earlier than 2013-04-04 |  |  |
